# MPP_BR.A.16.POI.039.00 - PROJETO FRAUDE OI

How a schedule from MS Project changed from version to version. A marks actual dates.

## Version 1 (saved 2017-11-09)

Note of the change: up docs

| ID | WBS | Task | Duration | Start | Finish | Predecessors | Complete | Total float | Constraint |
| --- | --- | --- | --- | --- | --- | --- | --- | --- | --- |
| 1 | 1 | **Projeto RAID FMS OI - Programa 1 ==== PG60 ====** | 229d | 2017-09-18 A | 2018-08-20 |  | 32% | 0d |  |
| 2 | 1.1 | **PRJ00024387 - Marcos de Aquisição de Infra-estrutura** | 229d | 2017-09-18 A | 2018-08-20 |  | 97% | 0d |  |
| 3 | 1.1.1 | **Acessos Lógicos** | 10d | 2017-09-18 A | 2017-09-29 A |  | 100% |  |  |
| 4 |  | Enviar dados de acesso e contas de serviço | 3d | 2017-09-18 A | 2017-09-20 A |  | 100% |  |  |
| 5 |  | Liberar acessos | 7d | 2017-09-21 A | 2017-09-29 A | 4 | 100% |  |  |
| 6 |  | Acessos Lógicos Liberados | 0d | 2017-09-29 A | 2017-09-29 A | 5 | 100% |  |  |
| 7 |  | Disponibilização DEV Onda 2 (HML RAID) | 1d | 2017-10-27 A | 2017-10-27 A |  | 100% |  |  |
| 8 |  | Instalação do Vanila em DEV Onda 2 | 4d | 2017-10-27 A | 2017-11-03 | 7 | 90% | 102.92d |  |
| 9 |  | PRJ00024506 - Ambiente de DEV disponível | 0d | 2017-11-29 A | 2017-11-29 |  | 50% | 125d | start no earlier than 2017-11-29 |
| 10 |  | PRJ00024506 - Ambiente de HML disponível | 0d | 2018-05-15 A | 2018-05-15 |  | 50% | 68d | start no earlier than 2018-05-15 |
| 11 |  | PRJ00024931 - Ambiente de PRD disponível | 0d | 2018-08-20 | 2018-08-20 |  |  | 0d | start no earlier than 2018-08-20 |
| 12 | 1.2 | **PRJ00025887 - ONDA 1: Planejamento e Setup** | 28d | 2017-09-18 A | 2017-10-27 |  | 90% | 201d |  |
| 13 |  | Acessos Físicos Liberados | 0d | 2017-09-18 A | 2017-09-18 A |  | 100% |  |  |
| 14 |  | Levantamento e elaboração Blueprint | 12d | 2017-09-18 A | 2017-10-03 A |  | 100% |  |  |
| 15 |  | Validação do blueprint Oi | 3d | 2017-10-04 A | 2017-10-06 A | 14 | 100% |  |  |
| 16 |  | Validação do blueprint WeDo | 13d | 2017-10-09 A | 2017-10-27 | 15 | 77% |  |  |
| 17 |  | Elaborar Plano de Desenvolvimento do Projeto (PDP) | 6d | 2017-09-26 A | 2017-10-03 A | 14SS+6d | 100% |  |  |
| 18 |  | Elaborar Material kick-off | 1d | 2017-10-04 A | 2017-10-04 A | 17 | 100% |  |  |
| 19 |  | Reunião de Kick-off | 1d | 2017-10-05 | 2017-10-05 | 14 |  | 215d | start no earlier than 2017-10-05 |
| 20 |  | Onda 1 - Planejamento e Setup - Finalizada | 0d | 2017-10-05 | 2017-10-05 | 19 |  | 215d |  |
| 21 | 1.2.9 | **Treinamento - Conceitos Básicos - Teoria (FMS-01)** | 6d | 2017-10-06 A | 2017-10-17 A |  | 100% |  |  |
| 22 |  | Elaborar material | 5d | 2017-10-06 A | 2017-10-13 A | 20 | 100% |  |  |
| 23 |  | Ambiente disponibilizado | 0d | 2017-10-13 A | 2017-10-13 A | 22 | 100% |  |  |
| 24 |  | Realizar Treinamento | 1d | 2017-10-17 A | 2017-10-17 A | 23 | 100% |  |  |
| 25 |  | Treinamento Finalizado | 0d | 2017-10-17 A | 2017-10-17 A | 24 | 100% |  |  |
| 26 | 1.3 | **PRJ00025351/SUB25837 - ONDA 2: TV off line (Quick Wins - Motor de Fraude)** | 14d | 2017-10-04 A | 2017-10-25 |  | 97% | 0d |  |
| 27 | 1.3.1 | **Detalhamento de regras de negócio e critérios de aceitação** | 9d | 2017-10-04 A | 2017-10-18 |  | 99% | 0d |  |
| 28 |  | 1o lote de regras para validação TI/WEDO (fontes de dados ainda indefinidas) | 3d | 2017-10-04 A | 2017-10-06 A |  | 100% |  |  |
| 29 |  | 2o lote de regras para validação TI/WEDO | 8d | 2017-10-04 A | 2017-10-17 A |  | 100% |  |  |
| 30 |  | Entrega versão final da documentação de regras | 1d | 2017-10-18 A | 2017-10-18 A | 29 | 100% |  |  |
| 31 |  | Validação do detalhamento de regras e criterios de aceitação | 3d | 2017-10-18 A | 2017-10-20 A | 27 | 100% |  |  |
| 32 |  | Elaboração DAS de Arquitetura | 8d | 2017-10-13 A | 2017-10-25 | 31FF | 90% |  |  |
| 33 | 1.4 | **Análise (Desenho de Solução, Especificação Técnica, Cenários de Teste e Critérios de Aceitação)** | 16d | 2017-10-23 A | 2017-11-14 |  | 76% | 0d |  |
| 34 |  | Elaboração de DSOL RAID-FMS | 12d | 2017-10-23 A | 2017-11-08 A | 31 | 100% |  |  |
| 35 |  | Aprovação de DSOL RAID-FMS | 2d | 2017-11-08 A | 2017-11-09 | 34FF | 50% |  |  |
| 36 |  | Elaboração de plano de testes Consolidado | 3d | 2017-11-09 A | 2017-11-13 | 31, 34 | 20% |  |  |
| 37 |  | Aprovação de plano de testes Consolidado | 1d | 2017-11-14 | 2017-11-14 | 36 |  |  |  |
| 38 |  | Construção e Testes Unitários no ambiente DEV (HML RAID) | 30d | 2017-11-16 | 2017-12-28 | 8FS+1d, 33 |  | 96d |  |
| 39 |  | Atualização de Servidores DEV no CMDB [agente DISCOVER] | 5d | 2017-11-29 | 2017-12-05 | 9 |  |  |  |
| 40 |  | Testes de Sistema (HML RAID) | 4d | 2018-01-02 | 2018-01-05 | 38FS+1d |  | 96d |  |
| 41 |  | UAT em ambiente DEV (Definitivo) | 4d | 2018-01-08 | 2018-01-11 | 40, 9 |  | 99d |  |
| 42 | 1.9 | **Definição responsabilidades N1/N2 [WEDO/Operações]** | 10d | 2018-01-02 | 2018-01-15 | 38FS+1d |  | 134d |  |
| 43 |  | Definição de arvore de atendimento remedy [CCO/N1/N2/N3] | 5d | 2018-01-02 | 2018-01-08 | 38FS+1d |  | 154d |  |
| 44 |  | Elaboração de matrix RACI [responsáveis x atividades] | 5d | 2018-01-02 | 2018-01-08 | 38FS+1d |  | 154d |  |
| 45 |  | Elaborar Runbook | 5d | 2018-01-02 | 2018-01-08 | 38FS+1d |  | 134d |  |
| 46 |  | Validação de runbook | 5d | 2018-01-09 | 2018-01-15 | 45 |  | 134d |  |
| 47 |  | Elaboração de MOP | 5d | 2018-01-02 | 2018-01-08 | 38FS+1d |  | 153d |  |
| 48 |  | Workshop com Operações | 1d | 2018-01-09 | 2018-01-09 | 47 |  | 153d |  |
| 49 |  | Construção de scripts de monitoração | 15d | 2018-01-16 | 2018-02-05 | 45, 46 |  | 134d |  |
| 50 |  | Construção de scripts de transmissão | 15d | 2018-01-16 | 2018-02-05 | 45, 46 |  | 134d |  |
| 51 |  | Testes de Conectividade e Transmissão [liberação portas de firewall e gestão de acesso] | 5d | 2017-11-29 | 2017-12-05 | 33, 9 |  | 176d |  |
| 52 |  | Elaborar PLIM | 2d | 2018-01-08 | 2018-01-09 | 38, 40 |  | 96d |  |
| 53 |  | Abertura de CRQ | 1d | 2018-01-09 | 2018-01-09 | 52FF |  | 96d |  |
| 54 |  | Aprovação de CRQ | 5d | 2018-01-10 | 2018-01-16 | 52, 53 |  | 96d |  |
| 55 |  | Planejamento e aprovação de GMUD | 5d | 2018-01-17 | 2018-01-23 | 54, 41 |  | 96d |  |
| 56 |  | Pacote RAID-FMS pronto para Implantação | 2d | 2018-01-12 | 2018-01-15 | 41 |  | 102d |  |
| 57 |  | Implantação [considerando ambiente DEV Definitiva como contingencia de produção Onda 2) | 2d | 2018-01-24 | 2018-01-25 | 9, 56, 41, 55 |  | 96d |  |
| 58 |  | Operação Assistida | 5d | 2018-01-29 | 2018-02-02 | 57FS+1d |  | 135d |  |
| 59 |  | Entrega da especificação técnica | 5d | 2018-01-29 | 2018-02-02 | 56, 58SS |  | 135d |  |
| 60 |  | WAC - Analytics (calibragem das regras) | 45d | 2018-01-26 | 2018-04-03 | 57 |  | 96d |  |
| 61 |  | Onda 2 - TV off line - Finalizada | 0d | 2018-02-02 | 2018-02-02 | 58, 59 |  | 135d |  |

## Version 2 (saved 2017-11-10)

Note of the change: up métricas

Last finish stays 2018-08-20. Complete tasks 18 → 19.

Changed:

| ID | Task | Start | Finish | Complete | Total float | Predecessors |
| --- | --- | --- | --- | --- | --- | --- |
| 1 | **Projeto RAID FMS OI - Programa 1 ==== PG60 ====** |  |  | 32% → 33% |  |  |
| 33 | **Análise (Desenho de Solução, Especificação Técnica, Cenários de Teste e Critérios de Aceitação)** |  |  | 76% → 83% |  |  |
| 35 | Aprovação de DSOL RAID-FMS |  | 2017-11-09 A | 50% → 100% |  |  |
| 36 | Elaboração de plano de testes Consolidado |  |  | 20% → 30% |  |  |
| 38 | Construção e Testes Unitários no ambiente DEV (HML RAID) | 2017-11-16 → 2017-11-10 (-6d) | 2017-12-28 → 2017-12-22 (-6d) |  | 96d → 99d | 8FS+1d, 33 → 8FS+1d, 35 |
| 40 | Testes de Sistema (HML RAID) | 2018-01-02 → 2017-12-27 (-6d) | 2018-01-05 → 2018-01-02 (-3d) |  | 96d → 99d |  |
| 41 | UAT em ambiente DEV (Definitivo) | 2018-01-08 → 2018-01-03 (-5d) | 2018-01-11 → 2018-01-08 (-3d) |  | 99d → 102d |  |
| 42 | **Definição responsabilidades N1/N2 [WEDO/Operações]** | 2018-01-02 → 2017-12-27 (-6d) | 2018-01-15 → 2018-01-10 (-5d) |  | 134d → 137d |  |
| 43 | Definição de arvore de atendimento remedy [CCO/N1/N2/N3] | 2018-01-02 → 2017-12-27 (-6d) | 2018-01-08 → 2018-01-03 (-5d) |  | 154d → 157d |  |
| 44 | Elaboração de matrix RACI [responsáveis x atividades] | 2018-01-02 → 2017-12-27 (-6d) | 2018-01-08 → 2018-01-03 (-5d) |  | 154d → 157d |  |
| 45 | Elaborar Runbook | 2018-01-02 → 2017-12-27 (-6d) | 2018-01-08 → 2018-01-03 (-5d) |  | 134d → 137d |  |
| 46 | Validação de runbook | 2018-01-09 → 2018-01-04 (-5d) | 2018-01-15 → 2018-01-10 (-5d) |  | 134d → 137d |  |
| 47 | Elaboração de MOP | 2018-01-02 → 2017-12-27 (-6d) | 2018-01-08 → 2018-01-03 (-5d) |  | 153d → 156d |  |
| 48 | Workshop com Operações | 2018-01-09 → 2018-01-04 (-5d) | 2018-01-09 → 2018-01-04 (-5d) |  | 153d → 156d |  |
| 49 | Construção de scripts de monitoração | 2018-01-16 → 2018-01-11 (-5d) | 2018-02-05 → 2018-01-31 (-5d) |  | 134d → 137d |  |
| 50 | Construção de scripts de transmissão | 2018-01-16 → 2018-01-11 (-5d) | 2018-02-05 → 2018-01-31 (-5d) |  | 134d → 137d |  |
| 52 | Elaborar PLIM | 2018-01-08 → 2018-01-03 (-5d) | 2018-01-09 → 2018-01-04 (-5d) |  | 96d → 99d |  |
| 53 | Abertura de CRQ | 2018-01-09 → 2018-01-04 (-5d) | 2018-01-09 → 2018-01-04 (-5d) |  | 96d → 99d |  |
| 54 | Aprovação de CRQ | 2018-01-10 → 2018-01-05 (-5d) | 2018-01-16 → 2018-01-11 (-5d) |  | 96d → 99d |  |
| 55 | Planejamento e aprovação de GMUD | 2018-01-17 → 2018-01-12 (-5d) | 2018-01-23 → 2018-01-18 (-5d) |  | 96d → 99d |  |
| 56 | Pacote RAID-FMS pronto para Implantação | 2018-01-12 → 2018-01-09 (-3d) | 2018-01-15 → 2018-01-10 (-5d) |  | 102d → 105d |  |
| 57 | Implantação [considerando ambiente DEV Definitiva como contingencia de produção Onda 2) | 2018-01-24 → 2018-01-19 (-5d) | 2018-01-25 → 2018-01-22 (-3d) |  | 96d → 99d |  |
| 58 | Operação Assistida | 2018-01-29 → 2018-01-24 (-5d) | 2018-02-02 → 2018-01-30 (-3d) |  | 135d → 138d |  |
| 59 | Entrega da especificação técnica | 2018-01-29 → 2018-01-24 (-5d) | 2018-02-02 → 2018-01-30 (-3d) |  | 135d → 138d |  |
| 60 | WAC - Analytics (calibragem das regras) | 2018-01-26 → 2018-01-23 (-3d) | 2018-04-03 → 2018-03-28 (-6d) |  | 96d → 99d |  |
| 61 | Onda 2 - TV off line - Finalizada | 2018-02-02 → 2018-01-30 (-3d) | 2018-02-02 → 2018-01-30 (-3d) |  | 135d → 138d |  |
